Schedule from MS Project, 2006-10-27 to 2007-01-03.

## Calendars

- 标准: Mon-Fri 08:00-12:00, 13:00-17:00; Sat-Sun off.

## Resources

| Resource |
| --- |
| 李磊 |
| 田利耕 |
| 彭翔飞 |
| 杨波 |
| 王磊 |
| 侯秀艳 |
| 姜浩翔 |
| 齐鹏 |
| 章杨玲 |
| 朱永丽 |
| 还需要 |

## Schedule

| ID | WBS | Task | Type | Duration | Start | Finish | Predecessors | Total slack | Free slack | Resources | Work |
| --- | --- | --- | --- | --- | --- | --- | --- | --- | --- | --- | --- |
| 1 | 1 | **MSProj11** |  | 49d? | 2006-10-27 | 2007-01-03 |  | 0d |  |  | 1144h |
| 2 | 1.1 | **竞彩足球、篮球赛果采集** |  | 9d | 2006-10-27 | 2006-11-08 |  | 0d |  |  | 96h |
| 3 | 1.1.1 | 技术设计、预研 |  | 3d | 2006-10-27 | 2006-10-31 |  | 0d |  | 杨波; 李磊 | 48h |
| 4 | 1.1.2 | 采集澳客 |  | 3d | 2006-11-01 | 2006-11-03 | 3 | 0d |  | 李磊 | 24h |
| 5 | 1.1.3 | 采集竞彩官网 |  | 3d | 2006-11-06 | 2006-11-08 | 4 | 0d |  | 李磊 | 24h |
| 6 | 1.1.4 | 完成 | milestone | 0d | 2006-11-08 | 2006-11-08 | 5 | 0d |  |  |  |
| 7 | 1.2 | **竞彩足球、篮球的自动预派奖、开奖** |  | 11d | 2006-11-09 | 2006-11-23 | 2 | 0d |  |  | 144h |
| 8 | 1.2.1 | 产品设计 |  | 2d | 2006-11-09 | 2006-11-10 |  | 0d |  | 田利耕; 彭翔飞; 杨波 | 48h |
| 9 | 1.2.2 | 技术设计 |  | 3d | 2006-11-13 | 2006-11-15 | 8 | 0d |  | 杨波; 王磊 | 48h |
| 10 | 1.2.3 | 开发 |  | 5d | 2006-11-16 | 2006-11-22 | 9 | 0d |  | 王磊 | 40h |
| 11 | 1.2.4 | 测试 |  | 1d | 2006-11-23 | 2006-11-23 | 10 | 0d |  | 侯秀艳 | 8h |
| 12 | 1.2.5 | 完成 | milestone | 0d | 2006-11-23 | 2006-11-23 | 11 | 0d |  |  |  |
| 13 | 1.3 | **采集竞彩足球赛事直播数据** |  | 15d | 2006-11-24 | 2006-12-14 | 7 | 13d | 0d |  | 224h |
| 14 | 1.3.1 | 分析竞彩官网网页数据格式 |  | 2d | 2006-11-24 | 2006-11-27 |  | 13d | 0d | 杨波 | 16h |
| 15 | 1.3.2 | 分析澳客网页数据格式 |  | 2d | 2006-11-28 | 2006-11-29 | 14 | 13d | 0d | 杨波; 王磊 | 32h |
| 16 | 1.3.3 | 分析彩客客户端数据格式 |  | 2d | 2006-11-30 | 2006-12-01 | 15 | 13d | 0d | 姜浩翔; 王磊 | 32h |
| 17 | 1.3.4 | 设计赛事直播系统架构 |  | 3d | 2006-12-04 | 2006-12-06 | 16 | 13d | 0d | 杨波; 王磊 | 48h |
| 18 | 1.3.5 | **开发** |  | 6d | 2006-12-07 | 2006-12-14 | 17 | 13d |  |  | 96h |
| 19 | 1.3.5.1 | 竞彩官网 |  | 3d | 2006-12-07 | 2006-12-11 |  | 13d | 0d | 王磊; 姜浩翔 | 48h |
| 20 | 1.3.5.2 | 澳客 |  | 3d | 2006-12-12 | 2006-12-14 | 19 | 13d |  | 王磊; 姜浩翔 | 48h |
| 21 | 1.4 | 测试 |  | 1d? | 2006-12-15 | 2006-12-15 | 13 | 13d | 0d | 侯秀艳 | 8h |
| 22 | 1.5 | 完成 | milestone | 0d | 2006-12-15 | 2006-12-15 | 21 | 13d |  |  |  |
| 23 | 1.6 | **web竞彩足球赛事直播页面** |  | 13d? | 2006-11-09 | 2006-11-27 | 2 | 27d |  |  | 120h |
| 24 | 1.6.1 | 产品设计 |  | 2d | 2006-11-09 | 2006-11-10 |  | 14d | 0d | 田利耕; 彭翔飞 | 32h |
| 25 | 1.6.2 | 网页设计 |  | 2d | 2006-11-13 | 2006-11-14 | 24 | 14d | 0d | 章杨玲 | 16h |
| 26 | 1.6.3 | 制作页面 |  | 3d | 2006-11-15 | 2006-11-17 | 25 | 14d | 0d | 李磊 | 24h |
| 27 | 1.6.4 | 开发 |  | 5d | 2006-11-20 | 2006-11-24 | 26 | 14d | 0d | 李磊 | 40h |
| 28 | 1.6.5 | 测试 |  | 1d? | 2006-11-27 | 2006-11-27 | 27 | 14d | 0d | 侯秀艳 | 8h |
| 29 | 1.6.6 | 完成 | milestone | 0d | 2006-11-27 | 2006-11-27 | 28 | 14d |  |  |  |

| ID | WBS | Task | Type | Duration | Start | Finish | Predecessors | Total slack | Resources | Work |
| --- | --- | --- | --- | --- | --- | --- | --- | --- | --- | --- |
| 30 | 1.7 | **android客户端竞彩足球赛事直播功能** |  | 8d? | 2006-11-24 | 2006-12-05 | 7 | 0d |  | 128h |
| 31 | 1.7.1 | 产品设计 |  | 1d | 2006-11-24 | 2006-11-24 |  | 0d | 齐鹏; 杨波; 田利耕 | 24h |
| 32 | 1.7.2 | **开发** |  | 3d | 2006-11-27 | 2006-11-29 | 31 | 0d |  | 48h |
| 33 | 1.7.2.1 | 客户端 |  | 3d | 2006-11-27 | 2006-11-29 |  | 0d | 齐鹏 | 24h |
| 34 | 1.7.2.2 | 服务器端 |  | 3d | 2006-11-27 | 2006-11-29 |  | 0d | 王磊 | 24h |
| 35 | 1.7.3 | 联调 |  | 3d | 2006-11-30 | 2006-12-04 | 32 | 0d | 王磊; 齐鹏 | 48h |
| 36 | 1.7.4 | 测试 |  | 1d? | 2006-12-05 | 2006-12-05 | 35 | 0d | 侯秀艳 | 8h |
| 37 | 1.7.5 | 完成 | milestone | 0d | 2006-12-05 | 2006-12-05 | 36 | 0d |  |  |
| 38 | 1.8 | **采集竞彩足球赔率信息** |  | 21d | 2006-12-06 | 2007-01-03 | 30 | 0d |  | 424h |
| 39 | 1.8.1 | 分析澳客赔率信息页面 |  | 1d | 2006-12-06 | 2006-12-06 |  | 0d | 朱永丽; 杨波; 姜浩翔 | 24h |
| 40 | 1.8.2 | 分析竞彩官网赔率信息页面 |  | 1d | 2006-12-07 | 2006-12-07 | 39 | 0d | 朱永丽; 杨波 | 16h |
| 41 | 1.8.3 | 设计赔率信息采集系统 |  | 3d | 2006-12-08 | 2006-12-12 | 40 | 0d | 杨波; 王磊 | 48h |
| 42 | 1.8.4 | 开发采集系统 |  | 6d | 2006-12-13 | 2006-12-20 | 41 | 0d | 朱永丽; 王磊; 姜浩翔 | 144h |
| 43 | 1.8.5 | 设计前端展示功能 |  | 2d | 2006-12-21 | 2006-12-22 | 42 | 0d | 田利耕; 杨波 | 32h |
| 44 | 1.8.6 | 页面设计 |  | 1d | 2006-12-25 | 2006-12-25 | 43 | 0d | 章杨玲 | 8h |
| 45 | 1.8.7 | 制作页面 |  | 3d | 2006-12-26 | 2006-12-28 | 44 | 0d | 朱永丽; 王磊; 姜浩翔 | 72h |
| 46 | 1.8.8 | 开发前端展示页面 |  | 3d | 2006-12-29 | 2007-01-02 | 45 | 0d | 朱永丽; 王磊; 姜浩翔 | 72h |
| 47 | 1.8.9 | 测试 |  | 1d | 2007-01-03 | 2007-01-03 | 46 | 0d | 侯秀艳 | 8h |
| 48 | 1.8.10 | 完成 | milestone | 0d | 2007-01-03 | 2007-01-03 | 47 | 0d |  |  |
